# World_Stories_01

Schedule from MS Project, 2014-08-11 to 2015-05-07, A marks actual dates.
3dots

## Calendars

- Standard: Mon-Fri 08:00-12:00, 13:00-17:00; Sat-Sun off.

## Resources

| Resource | Group | Rate |
| --- | --- | --- |
| mim.Armand | Manager | 45 |
| Manager |  |  |
| 3D Artist |  |  |
| 2D Artist |  |  |
| Animator |  |  |
| Developer |  |  |
| Writer |  |  |
| Narator |  |  |
| Musician |  |  |

## Schedule

| ID | WBS | Task | Type | Duration | Start | Finish | Predecessors | Complete | Remaining | Total slack | Free slack |
| --- | --- | --- | --- | --- | --- | --- | --- | --- | --- | --- | --- |
| 1 | 1 | **R&D Steps** |  | 7d | 2014-08-11 A | 2014-08-19 |  | 22% | 5.44d | -6d | 0d |
| 2 | 1.1 | Music (available resources) |  | 1d | 2014-08-11 | 2014-08-11 |  |  |  | -1d | 0d |
| 3 | 1.2 | FBX compatible rigging options (+Unity humanoid) |  | 1d | 2014-08-11 A | 2014-08-11 A | 2 | 100% |  |  |  |
| 4 | 1.3 | Engine selection |  | 1d | 2014-08-11 A | 2014-08-11 A | 3 | 100% |  |  |  |
| 5 | 1.4 | multiplayer |  | 1d | 2014-08-12 | 2014-08-12 | 4 |  |  | -7d | 0d |
| 6 | 1.5 | Native (IOS, Android, WP8) achievement and award system |  | 1d | 2014-08-13 | 2014-08-13 | 5 |  |  | -7d | 0d |
| 7 | 1.6 | Architecture/ structure definitions (asset management structure) |  | 1d | 2014-08-14 | 2014-08-14 | 6 |  |  | -7d | 0d |
| 8 | 1.7 | Weekly deadline definitions |  | 1d | 2014-08-15 | 2014-08-15 | 7 |  |  | -7d | 0d |
| 9 | 1.8 | Preparing of the data sheet of requirements (like size limit, etc.) for each of the platform submissions. |  | 0.5d | 2014-08-18 | 2014-08-18 | 8 |  |  | -7d | 0d |
| 10 | 1.9 | Visual effects and real-time render passes available on mobile platforms |  | 0.5d | 2014-08-18 | 2014-08-18 | 9 |  |  | -7d | 0d |
| 11 | 1.10 | In-App purchase |  | 1d | 2014-08-19 | 2014-08-19 | 10 |  |  | -7d | 0d |
| 12 | 2 | **Alpha releases (1 story)** |  | 38.23d | 2014-08-11 A | 2014-10-02 | 1 | 5% | 36.4d | 0d |  |
| 13 | 2.1 | **Pre-production** |  | 13.1d | 2014-08-11 A | 2014-08-28 |  | 13% | 11.42d | -6.1d | 0d |
| 14 | 2.1.1 | Script |  | 1d | 2014-08-11 A | 2014-08-20 |  | 90% | 0.1d | -6.1d | 0d |
| 15 | 2.1.2 | Story boards |  | 1d | 2014-08-20 | 2014-08-21 | 14 |  |  | -6.1d | 0d |
| 16 | 2.1.3 | Concept / Mood Paintings |  | 2d | 2014-08-21 | 2014-08-25 | 15 |  |  | -6.1d | 0d |
| 17 | 2.1.4 | Animation mockup (2D) |  | 1d | 2014-08-27 | 2014-08-28 | 16, 18 |  |  | -6.1d | 0d |
| 18 | 2.1.5 | Music (test) |  | 1d | 2014-08-26 | 2014-08-27 | 19 |  |  | -6.1d | 0d |
| 19 | 2.1.6 | Naration (test) |  | 1d | 2014-08-25 | 2014-08-26 | 16 |  |  | -6.1d | 0d |
| 20 | 2.1.7 | Trailer (Alpha) | milestone | 0d | 2014-08-28 | 2014-08-28 | 17 |  |  | -6.1d | 0d |
| 21 | 2.2 | **Production** |  | 31.23d | 2014-08-20 A | 2014-10-02 | 13 | 3% | 30.32d | 0d |  |
| 22 | 2.2.1 | Blueprints |  | 2d | 2014-08-20 A | 2014-08-29 |  | 12% | 1.76d | 0d |  |
| 23 | 2.2.2 | 3D Modeling |  | 1d | 2014-08-22 A | 2014-09-01 | 22 | 15% | 0.85d | 0d |  |
| 24 | 2.2.3 | UW & Texturing |  | 3d | 2014-08-25 A | 2014-09-04 | 23 | 12% | 2.64d | 0d |  |
| 25 | 2.2.4 | Rigging |  | 2d | 2014-08-28 A | 2014-09-08 | 24 | 6% | 1.88d | 0d |  |
| 26 | 2.2.5 | Animation |  | 1d | 2014-09-08 | 2014-09-09 | 25 |  |  | 0d |  |

Notes:
- 12: Alpha release will contain only one to two stories / will be available by free (at least one of the stories) / will contain all the nessescary options and the feautures

| ID | WBS | Task | Type | Duration | Start | Finish | Predecessors | Total slack | Free slack |
| --- | --- | --- | --- | --- | --- | --- | --- | --- | --- |
| 27 | 2.2.6 | **Sounds** |  | 3d | 2014-08-28 | 2014-09-02 |  | 21.13d | 5.13d |
| 28 | 2.2.6.1 | Sound fx |  | 1d | 2014-08-28 | 2014-08-29 |  | 21.13d | 0d |
| 29 | 2.2.6.2 | Musics |  | 1d | 2014-08-29 | 2014-09-01 | 28 | 21.13d | 0d |
| 30 | 2.2.6.3 | Narations |  | 1d | 2014-09-01 | 2014-09-02 | 29 | 21.13d |  |
| 31 | 2.2.7 | Trailer release |  | 1d | 2014-09-09 | 2014-09-10 | 26, 27 | 16d |  |
| 32 | 2.2.8 | **Unity dev** |  | 12d | 2014-09-09 | 2014-09-25 | 26 | 0d |  |
| 33 | 2.2.8.1 | Game logic |  | 1d | 2014-09-09 | 2014-09-10 |  | 0d |  |
| 34 | 2.2.8.2 | Importing assets |  | 1d | 2014-09-10 | 2014-09-11 | 33 | 0d |  |
| 35 | 2.2.8.3 | GUI Design + dev |  | 2d | 2014-09-11 | 2014-09-15 | 34 | 0d |  |
| 36 | 2.2.8.4 | Programming |  | 7d | 2014-09-15 | 2014-09-24 | 35 | 0d |  |
| 37 | 2.2.8.5 | Alpha builds |  | 1d | 2014-09-24 | 2014-09-25 | 36 | 0d |  |
| 38 | 2.2.9 | Primary test on devices |  | 1d | 2014-09-25 | 2014-09-26 | 32 | 0d |  |
| 39 | 2.2.10 | Debugging | manual | 2d | 2014-09-26 | 2014-09-30 | 38 |  |  |
| 40 | 2.2.11 | Market place submissions |  | 1d | 2014-09-30 | 2014-10-01 | 39 | 0d |  |
| 41 | 2.2.12 | Debugging / resubmitting | manual | 1d | 2014-10-01 | 2014-10-02 | 40 |  |  |
| 42 | 2.2.13 | Alpha 2 release + Trailler | milestone | 0d | 2014-10-02 | 2014-10-02 | 41 | 0d |  |
| 43 | 3 | **Funds** |  | 19d | 2014-10-02 | 2014-10-29 | 12 | 0d |  |
| 44 | 3.1 | Research, studies, planning |  | 2d | 2014-10-02 | 2014-10-06 |  | 17d |  |
| 45 | 3.2 | **Content creation** |  | 14d | 2014-10-02 | 2014-10-22 |  | 0d |  |
| 46 | 3.2.1 | Text |  | 2d | 2014-10-02 | 2014-10-06 |  | 0d |  |
| 47 | 3.2.2 | Images |  | 3d | 2014-10-06 | 2014-10-09 | 46 | 0d |  |
| 48 | 3.2.3 | Scripts |  | 2d | 2014-10-09 | 2014-10-13 | 47 | 0d |  |
| 49 | 3.2.4 | Filming sessions |  | 2d | 2014-10-13 | 2014-10-15 | 48 | 0d |  |
| 50 | 3.2.5 | FX + Editing |  | 2d | 2014-10-15 | 2014-10-17 | 49 | 0d |  |
| 51 | 3.2.6 | Formatting |  | 2d | 2014-10-17 | 2014-10-21 | 50 | 0d |  |
| 52 | 3.2.7 | Final preparations |  | 1d | 2014-10-21 | 2014-10-22 | 51 | 0d |  |
| 53 | 3.3 | Submitions |  | 2d | 2014-10-22 | 2014-10-24 | 45 | 3d |  |
| 54 | 3.4 | Advertising, social networks, etc |  | 5d | 2014-10-22 | 2014-10-29 | 45 | 0d |  |

Notes:
- 43: Funds aren't nesscescary for the continuation of the project but may faciliate it

| ID | WBS | Task | Type | Duration | Start | Finish | Predecessors | Total slack | Free slack |
| --- | --- | --- | --- | --- | --- | --- | --- | --- | --- |
| 55 | 3.5 | **Private fundings** |  | 11d | 2014-10-02 | 2014-10-17 |  | 8d |  |
| 56 | 3.5.1 | Research & planning |  | 3d | 2014-10-02 | 2014-10-07 |  | 8d | 0d |
| 57 | 3.5.2 | Proposal preparations |  | 5d | 2014-10-07 | 2014-10-14 | 56 | 8d | 0d |
| 58 | 3.5.3 | Submission/ communications |  | 3d | 2014-10-14 | 2014-10-17 | 57 | 8d |  |
| 59 | 4 | Project plan changes & refinments |  | 2d | 2014-10-29 | 2014-10-31 | 43 | 0d |  |
| 60 | 5 | ALPHA PHASE DONE! | milestone | 0d | 2014-10-31 | 2014-10-31 | 59 | 113d | 0d |
| 61 | 6 | **Beta release** |  | 67d | 2014-10-31 | 2015-02-03 | 59 | 0d |  |
| 62 | 6.1 | **Pre-production (3 stories)** |  | 17d | 2014-10-31 | 2014-11-25 |  | 50d |  |
| 63 | 6.1.1 | Script |  | 2d | 2014-10-31 | 2014-11-04 |  | 51d | 0d |
| 64 | 6.1.2 | Story boards |  | 3d | 2014-11-04 | 2014-11-07 | 63 | 51d | 0d |
| 65 | 6.1.3 | Concept / Mood Paintings |  | 6d | 2014-11-07 | 2014-11-17 | 64 | 51d | 1d |
| 66 | 6.1.4 | Animation mockup (2D) |  | 5d | 2014-11-18 | 2014-11-25 | 65, 67 | 50d | 0d |
| 67 | 6.1.5 | Music |  | 6d | 2014-11-10 | 2014-11-18 | 68 | 50d | 0d |
| 68 | 6.1.6 | Naration |  | 6d | 2014-10-31 | 2014-11-10 |  | 50d | 0d |
| 69 | 6.1.7 | Trailer ( Beta ) | milestone | 0d | 2014-11-25 | 2014-11-25 | 66 | 50d |  |
| 70 | 6.2 | **Production** |  | 67d | 2014-10-31 | 2015-02-03 | 13 | 0d |  |
| 71 | 6.2.1 | Blueprints |  | 6d | 2014-10-31 | 2014-11-10 |  | 0d |  |
| 72 | 6.2.2 | 3D Modeling |  | 6d | 2014-11-10 | 2014-11-18 | 71 | 0d |  |
| 73 | 6.2.3 | UW & Texturing |  | 6d | 2014-11-18 | 2014-11-26 | 72 | 0d |  |
| 74 | 6.2.4 | Rigging |  | 6d | 2014-11-26 | 2014-12-04 | 73 | 0d |  |
| 75 | 6.2.5 | Animation |  | 6d | 2014-12-04 | 2014-12-12 | 74 | 0d |  |
| 76 | 6.2.6 | **Sounds** |  | 18d | 2014-10-31 | 2014-11-26 |  | 49d | 12d |
| 77 | 6.2.6.1 | Sound fx |  | 6d | 2014-10-31 | 2014-11-10 |  | 49d | 0d |
| 78 | 6.2.6.2 | Musics |  | 6d | 2014-11-10 | 2014-11-18 | 77 | 49d | 0d |
| 79 | 6.2.6.3 | Narations |  | 6d | 2014-11-18 | 2014-11-26 | 78 | 49d |  |
| 80 | 6.2.7 | Trailer release | milestone | 0d | 2014-12-12 | 2014-12-12 | 75, 76 | 37d |  |

Notes:
- 61: From this phase, according to the results and outcome of the funding steps, planing may change and needs refinments and / or replaning. / Otherwise 3 more stories will be made available in this version anyway.

| ID | WBS | Task | Type | Duration | Start | Finish | Predecessors | Total slack | Free slack |
| --- | --- | --- | --- | --- | --- | --- | --- | --- | --- |
| 81 | 6.2.8 | **Unity dev** |  | 28d | 2014-12-12 | 2015-01-21 | 75 | 0d |  |
| 82 | 6.2.8.1 | Game logic |  | 5d | 2014-12-12 | 2014-12-19 |  | 0d |  |
| 83 | 6.2.8.2 | Importing assets |  | 2d | 2014-12-19 | 2014-12-23 | 82 | 0d |  |
| 84 | 6.2.8.3 | GUI Design + dev |  | 3d | 2014-12-23 | 2014-12-26 | 83 | 0d |  |
| 85 | 6.2.8.4 | Programming |  | 15d | 2014-12-26 | 2015-01-16 | 84 | 0d |  |
| 86 | 6.2.8.5 | Beta builds |  | 3d | 2015-01-16 | 2015-01-21 | 85 | 0d |  |
| 87 | 6.2.9 | Primary test on devices |  | 2d | 2015-01-21 | 2015-01-23 | 81 | 0d |  |
| 88 | 6.2.10 | Debugging |  | 3d | 2015-01-23 | 2015-01-28 | 87 | 0d |  |
| 89 | 6.2.11 | Market place submissions |  | 2d | 2015-01-28 | 2015-01-30 | 88 | 0d |  |
| 90 | 6.2.12 | Debugging / resubmitting |  | 2d | 2015-01-30 | 2015-02-03 | 89 | 0d |  |
| 91 | 6.3 | Beta release + Trailler | milestone | 0d | 2015-02-03 | 2015-02-03 | 70 | 0d |  |
| 92 | 7 | **Side Products** |  | 21d | 2014-10-31 | 2014-12-01 | 60 | 113d |  |
| 93 | 7.1 | Postal & Thank-you cards |  | 21d | 2014-10-31 | 2014-12-01 |  | 113d |  |
| 94 | 7.2 | Stickers |  | 21d | 2014-10-31 | 2014-12-01 |  | 113d |  |
| 95 | 7.3 | Coupons and promotion cards |  | 21d | 2014-10-31 | 2014-12-01 |  | 113d |  |
| 96 | 7.4 | Card-board models |  | 21d | 2014-10-31 | 2014-12-01 |  | 113d |  |
| 97 | 7.5 | Silk-screen |  | 21d | 2014-10-31 | 2014-12-01 |  | 113d |  |
| 98 | 8 | BETA PHASE DONE! | milestone | 0d | 2015-02-03 | 2015-02-03 | 61 | 67d |  |
| 99 | 9 | **Final Release (V1)** |  | 67d | 2015-02-03 | 2015-05-07 | 61 | 0d |  |
| 100 | 9.1 | **Pre-production (+ 3-6 stories)** |  | 17d | 2015-02-03 | 2015-02-26 |  | 50d |  |
| 101 | 9.1.1 | Script |  | 2d | 2015-02-03 | 2015-02-05 |  | 51d | 0d |
| 102 | 9.1.2 | Story boards |  | 3d | 2015-02-05 | 2015-02-10 | 101 | 51d | 0d |
| 103 | 9.1.3 | Concept / Mood Paintings |  | 6d | 2015-02-10 | 2015-02-18 | 102 | 51d | 1d |
| 104 | 9.1.4 | Animation mockup (2D) |  | 5d | 2015-02-19 | 2015-02-26 | 103, 105 | 50d | 0d |
| 105 | 9.1.5 | Music |  | 6d | 2015-02-11 | 2015-02-19 | 106 | 50d | 0d |
| 106 | 9.1.6 | Naration |  | 6d | 2015-02-03 | 2015-02-11 |  | 50d | 0d |
| 107 | 9.1.7 | Trailer ( Final ) | milestone | 0d | 2015-02-26 | 2015-02-26 | 104 | 50d |  |

| ID | WBS | Task | Type | Duration | Start | Finish | Predecessors | Total slack | Free slack |
| --- | --- | --- | --- | --- | --- | --- | --- | --- | --- |
| 108 | 9.2 | **Production** |  | 67d | 2015-02-03 | 2015-05-07 | 13 | 0d |  |
| 109 | 9.2.1 | Blueprints |  | 6d | 2015-02-03 | 2015-02-11 |  | 0d |  |
| 110 | 9.2.2 | 3D Modeling |  | 6d | 2015-02-11 | 2015-02-19 | 109 | 0d |  |
| 111 | 9.2.3 | UW & Texturing |  | 6d | 2015-02-19 | 2015-02-27 | 110 | 0d |  |
| 112 | 9.2.4 | Rigging |  | 6d | 2015-02-27 | 2015-03-09 | 111 | 0d |  |
| 113 | 9.2.5 | Animation |  | 6d | 2015-03-09 | 2015-03-17 | 112 | 0d |  |
| 114 | 9.2.6 | **Sounds** |  | 18d | 2015-02-03 | 2015-02-27 |  | 49d | 12d |
| 115 | 9.2.6.1 | Sound fx |  | 6d | 2015-02-03 | 2015-02-11 |  | 49d | 0d |
| 116 | 9.2.6.2 | Musics |  | 6d | 2015-02-11 | 2015-02-19 | 115 | 49d | 0d |
| 117 | 9.2.6.3 | Narations |  | 6d | 2015-02-19 | 2015-02-27 | 116 | 49d |  |
| 118 | 9.2.7 | Trailer release | milestone | 0d | 2015-03-17 | 2015-03-17 | 113, 114 | 37d |  |
| 119 | 9.2.8 | **Unity dev** |  | 28d | 2015-03-17 | 2015-04-24 | 113 | 0d |  |
| 120 | 9.2.8.1 | Game logic |  | 5d | 2015-03-17 | 2015-03-24 |  | 0d |  |
| 121 | 9.2.8.2 | Importing assets |  | 2d | 2015-03-24 | 2015-03-26 | 120 | 0d |  |
| 122 | 9.2.8.3 | GUI Design + dev |  | 3d | 2015-03-26 | 2015-03-31 | 121 | 0d |  |
| 123 | 9.2.8.4 | Programming |  | 15d | 2015-03-31 | 2015-04-21 | 122 | 0d |  |
| 124 | 9.2.8.5 | Beta builds |  | 3d | 2015-04-21 | 2015-04-24 | 123 | 0d |  |
| 125 | 9.2.9 | Primary test on devices |  | 2d | 2015-04-24 | 2015-04-28 | 119 | 0d |  |
| 126 | 9.2.10 | Debugging |  | 3d | 2015-04-28 | 2015-05-01 | 125 | 0d |  |
| 127 | 9.2.11 | Market place submissions |  | 2d | 2015-05-01 | 2015-05-05 | 126 | 0d |  |
| 128 | 9.2.12 | Debugging / resubmitting |  | 2d | 2015-05-05 | 2015-05-07 | 127 | 0d |  |
| 129 | 9.3 | Final release + Trailler | milestone | 0d | 2015-05-07 | 2015-05-07 | 108 | 0d |  |
| 130 | 10 | Version 1.0 Done! | milestone | 0d | 2015-05-07 | 2015-05-07 | 99 | 0d |  |
